# Proyecto restaurante

Schedule from MS Project, 2020-02-10 to 2020-08-14, status date 2020-05-07, costs in €, A marks actual dates.

## Calendars

- Estándar: Mon-Fri 09:00-13:00, 15:00-19:00; Sat-Sun off.
- Calendario del proyecto: Mon-Fri 09:00-13:00, 15:00-19:00; Sat-Sun off. Exceptions (off unless hours are given): 2020-04-06 to 2020-04-13 (Semana santa), 2020-05-01 to 2020-05-03 (Puente de mayo).

## Resources

| Resource | Rate |
| --- | --- |
| Programador/Analista 2 | 9 |
| Técnico | 9 |
| Especialista UX/UI | 9 |
| Programador/Analista 1 | 9 |
| Programador/Analista 3 | 9 |

## Schedule

| ID | WBS | Task | Type | Duration | Start | Finish | Predecessors | Complete | Remaining | Baseline start | Baseline finish | Baseline duration | Total slack | Constraint | Resources | Work | Actual work | Cost | Baseline cost | Actual cost |
| --- | --- | --- | --- | --- | --- | --- | --- | --- | --- | --- | --- | --- | --- | --- | --- | --- | --- | --- | --- | --- |
| 1 | 1 | **Negociación de la oferta** |  | 18.5d | 2020-02-10 09:00 A | 2020-03-05 13:00 A |  | 100% |  | 2020-02-10 09:00 | 2020-03-04 17:00 | 17.75d |  |  |  | 349h | 349h | 3,141 | 2,763 | 3,141 |
| 2 | 1.1 | Reunión con el cliente |  | 2h | 2020-02-10 09:00 A | 2020-02-10 11:00 A |  | 100% |  | 2020-02-10 09:00 | 2020-02-10 11:00 | 2h |  |  | Programador/Analista 1 | 2h | 2h | 18 | 18 | 18 |
| 3 | 1.2 | Estimar costes/gastos |  | 8d | 2020-02-10 11:00 A | 2020-02-20 13:00 A | 2 | 100% |  | 2020-02-10 11:00 | 2020-02-19 13:00 | 7d |  |  | Programador/Analista 2; Programador/Analista 3; Programador/Analista 1 | 192h | 192h | 1,728 | 1,512 | 1,728 |
| 4 | 1.3 | Fijar precio de venta |  | 8d | 2020-02-19 15:00 A | 2020-03-02 13:00 A | 3 | 100% |  | 2020-02-19 15:00 | 2020-02-28 13:00 | 7d |  |  | Programador/Analista 1; Programador/Analista 3 | 118h | 118h | 1,062 | 990 | 1,062 |
| 5 | 1.4 | Elaborar contrato |  | 4d | 2020-02-28 15:00 A | 2020-03-05 13:00 A | 4 | 100% |  | 2020-02-28 15:00 | 2020-03-04 13:00 | 3d |  |  | Programador/Analista 2 | 32h | 32h | 288 | 216 | 288 |
| 6 | 1.5 | Presentación y negociación del contrato |  | 3h | 2020-03-04 15:00 A | 2020-03-04 18:00 A | 5 | 100% |  | 2020-03-04 15:00 | 2020-03-04 17:00 | 2h |  |  | Programador/Analista 1 | 3h | 3h | 27 | 18 | 27 |
| 7 | 1.6 | Firma del contrato | milestone | 2h | 2020-03-04 15:00 A | 2020-03-04 17:00 A | 5 | 100% |  | 2020-03-04 15:00 | 2020-03-04 16:00 | 1h |  |  | Programador/Analista 1 | 2h | 2h | 18 | 9 | 18 |
| 8 | 2 | **Análisis y especificación de requisitos** |  | 30.5d | 2020-03-05 09:00 A | 2020-04-16 13:00 | 1 | 94% | 1.91d | 2020-03-05 09:00 | 2020-04-16 13:00 | 30.5d | 0d |  |  | 128h | 120h | 1,152 | 1,008 | 1,080 |
| 9 | 2.1 | Definir valor estratégico |  | 4d | 2020-03-05 09:00 A | 2020-03-10 19:00 A | 7 | 100% |  | 2020-03-05 09:00 | 2020-03-09 19:00 | 3d |  | finish no earlier than 2020-03-09 19:00 | Programador/Analista 1 | 32h | 32h | 288 | 216 | 288 |
| 10 | 2.2 | Definir objetivos y prioridades |  | 4d | 2020-03-09 09:00 A | 2020-03-13 11:00 A | 7 | 100% |  | 2020-03-09 09:00 | 2020-03-12 11:00 | 3d |  | start no earlier than 2020-03-09 09:00 | Programador/Analista 2 | 32h | 32h | 288 | 216 | 288 |
| 11 | 2.3 | Especificación de requisitos |  | 7d | 2020-03-27 11:00 A | 2020-04-15 13:00 | 9, 10 | 86% | 1d | 2020-03-27 11:00 | 2020-04-15 13:00 | 7d | 1d | start no earlier than 2020-03-27 09:00 | Programador/Analista 3 | 56h | 48h | 504 | 504 | 432 |
| 12 | 2.4 | Definir hitos y puntos de control |  | 1d | 2020-04-15 15:00 A | 2020-04-16 13:00 A | 11 | 100% |  | 2020-04-15 15:00 | 2020-04-16 13:00 | 1d |  |  | Programador/Analista 2 | 8h | 8h | 72 | 72 | 72 |
| 13 | 3 | **Diseño** |  | 16d | 2020-04-16 15:00 A | 2020-05-08 13:00 | 8 | 22% | 12.49d | 2020-04-16 15:00 | 2020-05-08 13:00 | 16d | 0d |  |  | 228h | 50h | 2,052 | 2,052 | 450 |
| 14 | 3.1 | Identificar soluciones potenciales |  | 7d | 2020-04-16 15:00 A | 2020-04-27 17:00 | 11 | 86% | 1d | 2020-04-16 15:00 | 2020-04-27 17:00 | 7d | 8.75d |  | Programador/Analista 1 | 56h | 48h | 504 | 504 | 432 |
| 15 | 3.2 | Elegir la mejor solución |  | 2h | 2020-04-27 17:00 A | 2020-04-27 19:00 A | 14 | 100% |  | 2020-04-27 17:00 | 2020-04-27 19:00 | 2h |  |  | Programador/Analista 2 | 2h | 2h | 18 | 18 | 18 |
| 16 | 3.3 | Selección hardware y software |  | 7d | 2020-04-28 09:00 | 2020-05-08 11:00 | 15 |  |  | 2020-04-28 09:00 | 2020-05-08 11:00 | 7d | 0d |  | Programador/Analista 3 | 56h |  | 504 | 504 |  |
| 17 | 3.4 | Realización de diagramas UML |  | 7d | 2020-04-28 09:00 | 2020-05-08 11:00 | 15 |  |  | 2020-04-28 09:00 | 2020-05-08 11:00 | 7d | 0d |  | Programador/Analista 1 | 56h |  | 504 | 504 |  |
| 18 | 3.5 | Diseño de la base de datos |  | 7d | 2020-04-28 09:00 | 2020-05-08 11:00 | 15 |  |  | 2020-04-28 09:00 | 2020-05-08 11:00 | 7d | 0d |  | Programador/Analista 2 | 56h |  | 504 | 504 |  |
| 19 | 3.6 | Aprobación del diseño | milestone | 2h | 2020-05-08 11:00 | 2020-05-08 13:00 | 16, 17, 18 |  |  | 2020-05-08 11:00 | 2020-05-08 13:00 | 2h | 0d |  | Programador/Analista 3 | 2h |  | 18 | 18 |  |
| 20 | 4 | **Implementación** |  | 61.5d | 2020-05-08 15:00 | 2020-08-03 19:00 | 13 |  |  | 2020-05-08 15:00 | 2020-08-03 19:00 | 61.5d | 0d |  |  | 960h |  | 8,640 | 8,640 |  |
| 21 | 4.1 | Desarrollo aplicación para tablet |  | 2mo | 2020-05-08 15:00 | 2020-07-06 13:00 | 19 |  |  | 2020-05-08 15:00 | 2020-07-06 13:00 | 2mo | 0d |  | Programador/Analista 1 | 320h |  | 2,880 | 2,880 |  |
| 22 | 4.2 | Desarrollo de la base de datos |  | 2mo | 2020-05-08 15:00 | 2020-07-06 13:00 | 19 |  |  | 2020-05-08 15:00 | 2020-07-06 13:00 | 2mo | 0d |  | Programador/Analista 2 | 320h |  | 2,880 | 2,880 |  |
| 23 | 4.3 | Pruebas unitarias y de integración |  | 1mo | 2020-07-06 15:00 | 2020-08-03 19:00 | 21, 22 |  |  | 2020-07-06 15:00 | 2020-08-03 19:00 | 1mo | 0d |  | Programador/Analista 3 | 160h |  | 1,440 | 1,440 |  |
| 24 | 4.4 | Desarrollo vista interfaz gráfica de usuario |  | 1mo | 2020-07-06 15:00 | 2020-08-03 19:00 | 21, 22 |  |  | 2020-07-06 15:00 | 2020-08-03 19:00 | 1mo | 0d |  | Especialista UX/UI | 160h |  | 1,440 | 1,440 |  |

| ID | WBS | Task | Type | Duration | Start | Finish | Predecessors | Complete | Remaining | Baseline start | Baseline finish | Baseline duration | Total slack | Constraint | Calendar | Resources | Work | Actual work | Cost | Baseline cost | Actual cost |
| --- | --- | --- | --- | --- | --- | --- | --- | --- | --- | --- | --- | --- | --- | --- | --- | --- | --- | --- | --- | --- | --- |
| 25 | 5 | **Reuniones de seguimiento** |  | 123.25d | 2020-02-14 09:00 A | 2020-08-14 11:00 |  | 40% | 73.95d | 2020-02-14 09:00 | 2020-08-14 11:00 | 123.25d | 0.12d |  | Calendario del proyecto |  | 96h | 33.6h | 864 | 864 | 302.4 |
| 26 | 5.1 | Reuniones de seguimiento 1 |  | 2h | 2020-02-14 09:00 A | 2020-02-14 11:00 A |  | 100% |  | 2020-02-14 09:00 | 2020-02-14 11:00 | 2h |  | start no earlier than 2020-02-14 09:00 | Calendario del proyecto | Programador/Analista 2; Programador/Analista 1; Programador/Analista 3 | 6h | 6h | 54 | 54 | 54 |
| 27 | 5.2 | Reuniones de seguimiento 2 |  | 2h | 2020-02-28 09:00 A | 2020-02-28 11:00 A |  | 100% |  | 2020-02-28 09:00 | 2020-02-28 11:00 | 2h |  | start no earlier than 2020-02-28 09:00 | Calendario del proyecto | Programador/Analista 2; Programador/Analista 1; Programador/Analista 3 | 6h | 6h | 54 | 54 | 54 |
| 28 | 5.3 | Reuniones de seguimiento 3 |  | 2h | 2020-03-13 09:00 A | 2020-03-13 11:00 A |  | 100% |  | 2020-03-13 09:00 | 2020-03-13 11:00 | 2h |  | start no earlier than 2020-03-13 09:00 | Calendario del proyecto | Programador/Analista 2; Programador/Analista 1; Programador/Analista 3 | 6h | 6h | 54 | 54 | 54 |
| 29 | 5.4 | Reuniones de seguimiento 4 |  | 2h | 2020-03-27 09:00 A | 2020-03-27 11:00 A |  | 100% |  | 2020-03-27 09:00 | 2020-03-27 11:00 | 2h |  | start no earlier than 2020-03-27 09:00 | Calendario del proyecto | Programador/Analista 2; Programador/Analista 1; Programador/Analista 3 | 6h | 6h | 54 | 54 | 54 |
| 30 | 5.5 | Reuniones de seguimiento 5 |  | 2h | 2020-04-14 09:00 A | 2020-04-14 11:00 |  | 80% | 0.4h | 2020-04-14 09:00 | 2020-04-14 11:00 | 2h | 87.12d | start no earlier than 2020-04-10 09:00 | Calendario del proyecto | Programador/Analista 2; Programador/Analista 1; Programador/Analista 3 | 6h | 4.8h | 54 | 54 | 43.2 |
| 31 | 5.6 | Reuniones de seguimiento 6 |  | 2h | 2020-04-24 09:00 A | 2020-04-24 11:00 |  | 80% | 0.4h | 2020-04-24 09:00 | 2020-04-24 11:00 | 2h | 79.12d | start no earlier than 2020-04-24 09:00 | Calendario del proyecto | Programador/Analista 2; Programador/Analista 1; Programador/Analista 3 | 6h | 4.8h | 54 | 54 | 43.2 |
| 32 | 5.7 | Reuniones de seguimiento 7 |  | 2h | 2020-05-08 09:00 | 2020-05-08 11:00 |  |  |  | 2020-05-08 09:00 | 2020-05-08 11:00 | 2h | 70.12d | start no earlier than 2020-05-08 09:00 | Calendario del proyecto | Programador/Analista 2; Programador/Analista 1; Programador/Analista 3 | 6h |  | 54 | 54 |  |
| 33 | 5.8 | Reuniones de seguimiento 8 |  | 2h | 2020-05-22 09:00 | 2020-05-22 11:00 |  |  |  | 2020-05-22 09:00 | 2020-05-22 11:00 | 2h | 60.12d | start no earlier than 2020-05-22 09:00 | Calendario del proyecto | Programador/Analista 2; Programador/Analista 1; Programador/Analista 3 | 6h |  | 54 | 54 |  |
| 34 | 5.9 | Reuniones de seguimiento 9 |  | 2h | 2020-06-05 09:00 | 2020-06-05 11:00 |  |  |  | 2020-06-05 09:00 | 2020-06-05 11:00 | 2h | 50.12d | start no earlier than 2020-06-05 09:00 | Calendario del proyecto | Programador/Analista 2; Programador/Analista 1; Programador/Analista 3 | 6h |  | 54 | 54 |  |
| 35 | 5.10 | Reuniones de seguimiento 10 |  | 2h | 2020-06-19 09:00 | 2020-06-19 11:00 |  |  |  | 2020-06-19 09:00 | 2020-06-19 11:00 | 2h | 40.12d | start no earlier than 2020-06-19 09:00 | Calendario del proyecto | Programador/Analista 2; Programador/Analista 1; Programador/Analista 3 | 6h |  | 54 | 54 |  |
| 36 | 5.11 | Reuniones de seguimiento 11 |  | 2h | 2020-07-03 09:00 | 2020-07-03 11:00 |  |  |  | 2020-07-03 09:00 | 2020-07-03 11:00 | 2h | 30.12d | start no earlier than 2020-07-03 09:00 | Calendario del proyecto | Programador/Analista 2; Programador/Analista 1; Programador/Analista 3 | 6h |  | 54 | 54 |  |
| 37 | 5.12 | Reuniones de seguimiento 12 |  | 2h | 2020-07-17 09:00 | 2020-07-17 11:00 |  |  |  | 2020-07-17 09:00 | 2020-07-17 11:00 | 2h | 20.12d | start no earlier than 2020-07-17 09:00 | Calendario del proyecto | Programador/Analista 2; Programador/Analista 1; Programador/Analista 3; Especialista UX/UI; Técnico | 10h |  | 90 | 90 |  |
| 38 | 5.13 | Reuniones de seguimiento 13 |  | 2h | 2020-07-31 09:00 | 2020-07-31 11:00 |  |  |  | 2020-07-31 09:00 | 2020-07-31 11:00 | 2h | 10.12d | start no earlier than 2020-07-31 09:00 | Calendario del proyecto | Programador/Analista 2; Programador/Analista 1; Programador/Analista 3; Técnico; Especialista UX/UI | 10h |  | 90 | 90 |  |
| 39 | 5.14 | Reuniones de seguimiento 14 |  | 2h | 2020-08-14 09:00 | 2020-08-14 11:00 |  |  |  | 2020-08-14 09:00 | 2020-08-14 11:00 | 2h | 0.12d | start no earlier than 2020-08-14 09:00 | Calendario del proyecto | Programador/Analista 2; Programador/Analista 1; Programador/Analista 3; Técnico; Especialista UX/UI | 10h |  | 90 | 90 |  |
| 40 | 6 | **Puesta en marcha del sistema** |  | 8.38d | 2020-08-04 09:00 | 2020-08-14 12:00 | 20 |  |  | 2020-08-04 09:00 | 2020-08-14 12:00 | 8.38d | 0d |  |  |  | 65h |  | 585 | 585 |  |
| 41 | 6.1 | Reforma de la instalación del cliente |  | 3d | 2020-08-04 09:00 | 2020-08-06 19:00 | 24 |  |  | 2020-08-04 09:00 | 2020-08-06 19:00 | 3d | 0d |  |  | Técnico | 24h |  | 216 | 216 |  |
| 42 | 6.2 | Montaje de dispositivos |  | 3d | 2020-08-07 09:00 | 2020-08-12 11:00 | 41 |  |  | 2020-08-07 09:00 | 2020-08-12 11:00 | 3d | 0d |  |  | Técnico | 24h |  | 216 | 216 |  |
| 43 | 6.3 | Prueba de funcionamiento del sistema |  | 2d | 2020-08-12 11:00 | 2020-08-14 11:00 | 42 |  |  | 2020-08-12 11:00 | 2020-08-14 11:00 | 2d | 0d |  |  | Técnico | 16h |  | 144 | 144 |  |
| 44 | 6.4 | Entrega manual de manuales de explotación, usuario y mantenimiento |  | 1h | 2020-08-14 11:00 | 2020-08-14 12:00 | 43 |  |  | 2020-08-14 11:00 | 2020-08-14 12:00 | 1h | 0d |  |  | Técnico | 1h |  | 9 | 9 |  |
| 45 | 7 | **Cierre** |  | 0d | 2020-08-14 12:00 | 2020-08-14 12:00 | 40 |  |  | 2020-08-14 12:00 | 2020-08-14 12:00 | 0d | 0d |  |  |  |  |  |  |  |  |
| 46 | 7.1 | Entrega del sistema | milestone | 0d | 2020-08-14 12:00 | 2020-08-14 12:00 | 44 |  |  | 2020-08-14 12:00 | 2020-08-14 12:00 | 0d | 0d |  |  | Programador/Analista 3 |  |  |  |  |  |
